# Micromouse

Schedule from GanttProject, 2019-02-11 to 2019-05-19, baseline: Initial plan 14/02/2019.

## Calendars

- Project calendar: Mon-Sun working.

## Schedule

| ID | WBS | Task | Type | Duration | Start | Finish | Predecessors | Complete | Baseline start | Baseline finish | Baseline duration |
| --- | --- | --- | --- | --- | --- | --- | --- | --- | --- | --- | --- |
| 1 | 1 | Ende Vorlesungszeit | milestone | 0d | 2019-05-19 | 2019-05-19 |  |  | 2019-05-19 | 2019-05-19 | 0d |
| 2 | 2 | **Hardware** |  | 34d | 2019-02-11 | 2019-03-16 |  | 30% | 2019-02-11 | 2019-03-16 | 34d |
| 3 | 2.1 | Bauteile Auswählen |  | 8d | 2019-02-11 | 2019-02-18 |  | 76% | 2019-02-11 | 2019-02-18 | 8d |
| 4 | 2.2 | **Schaltkreis planen** |  | 4d | 2019-02-19 | 2019-02-22 |  | 37% | 2019-02-19 | 2019-02-22 | 4d |
| 5 | 2.2.1 | Schaltplan |  | 2d | 2019-02-19 | 2019-02-20 | 3 | 75% | 2019-02-19 | 2019-02-20 | 2d |
| 6 | 2.2.2 | PCB |  | 2d | 2019-02-21 | 2019-02-22 | 5 |  | 2019-02-21 | 2019-02-22 | 2d |
| 7 | 2.3 | PCB-Layout Fertig | milestone | 0d | 2019-02-23 | 2019-02-23 | 4, 13, 14 |  | 2019-02-23 | 2019-02-23 | 0d |
| 8 | 2.4 | PCB und Bauteile beschaffen |  | 17d | 2019-02-23 | 2019-03-11 | 7 |  | 2019-02-23 | 2019-03-11 | 17d |
| 9 | 2.5 | Bauteile einlöten |  | 4d | 2019-03-12 | 2019-03-15 | 8 |  | 2019-03-12 | 2019-03-15 | 4d |
| 10 | 2.6 | Fahrzeug zusammenbauen |  | 1d | 2019-03-16 | 2019-03-16 | 9, 12 |  | 2019-03-16 | 2019-03-16 | 1d |
| 11 | 2.7 | Hardware fertig | milestone | 0d | 2019-03-17 | 2019-03-17 | 10 |  | 2019-03-17 | 2019-03-17 | 0d |
| 12 | 2.8 | **Konstruktionen** |  | 13d | 2019-02-13 | 2019-02-25 |  | 55% | 2019-02-13 | 2019-02-25 | 13d |
| 13 | 2.8.1 | LED Halter planen |  | 10d | 2019-02-13 | 2019-02-22 |  | 100% | 2019-02-13 | 2019-02-22 | 10d |
| 14 | 2.8.2 | Akkuhalter planen |  | 5d | 2019-02-18 | 2019-02-22 |  |  | 2019-02-18 | 2019-02-22 | 5d |
| 15 | 2.8.3 | LED- und Akkuhalter anfertigen |  | 3d | 2019-02-23 | 2019-02-25 | 13, 14 |  | 2019-02-23 | 2019-02-25 | 3d |
| 16 | 3 | **Software** |  | 65d | 2019-02-23 | 2019-04-28 |  |  | 2019-02-23 | 2019-04-28 | 65d |
| 17 | 3.1 | Program Backbone festlegen |  | 8d | 2019-02-23 | 2019-03-02 |  |  | 2019-02-23 | 2019-03-02 | 8d |
| 18 | 3.2 | **Peripherien** |  | 25d | 2019-03-03 | 2019-03-27 | 17 |  | 2019-03-03 | 2019-03-27 | 25d |
| 19 | 3.2.1 | **Peripherien konfigurieren** |  | 9d | 2019-03-03 | 2019-03-11 | 8FF |  | 2019-03-03 | 2019-03-11 | 9d |
| 20 | 3.2.1.1 | Motor Driver |  | 9d | 2019-03-03 | 2019-03-11 |  |  | 2019-03-03 | 2019-03-11 | 9d |
| 21 | 3.2.1.2 | IMU Einheit |  | 9d | 2019-03-03 | 2019-03-11 |  |  | 2019-03-03 | 2019-03-11 | 9d |
| 22 | 3.2.1.3 | IR LEDs und Transistors |  | 9d | 2019-03-03 | 2019-03-11 |  |  | 2019-03-03 | 2019-03-11 | 9d |
| 23 | 3.2.1.4 | Enkoders |  | 9d | 2019-03-03 | 2019-03-11 |  |  | 2019-03-03 | 2019-03-11 | 9d |
| 24 | 3.2.1.5 | Bluetooth Modul |  | 9d | 2019-03-03 | 2019-03-11 |  |  | 2019-03-03 | 2019-03-11 | 9d |
| 25 | 3.2.1.6 | Akku Wache |  | 9d | 2019-03-03 | 2019-03-11 |  |  | 2019-03-03 | 2019-03-11 | 9d |
| 26 | 3.2.1.7 | General Purpose LEDs |  | 9d | 2019-03-03 | 2019-03-11 |  |  | 2019-03-03 | 2019-03-11 | 9d |

| ID | WBS | Task | Type | Duration | Start | Finish | Predecessors | Baseline start | Baseline finish | Baseline duration |
| --- | --- | --- | --- | --- | --- | --- | --- | --- | --- | --- |
| 27 | 3.2.2 | **Peripherien testen** |  | 10d | 2019-03-18 | 2019-03-27 | 11, 65 | 2019-03-18 | 2019-03-27 | 10d |
| 28 | 3.2.2.1 | Motor Driver |  | 10d | 2019-03-18 | 2019-03-27 |  | 2019-03-18 | 2019-03-27 | 10d |
| 29 | 3.2.2.2 | IMU Einheit |  | 10d | 2019-03-18 | 2019-03-27 | 59FF | 2019-03-18 | 2019-03-27 | 10d |
| 30 | 3.2.2.3 | IR LEDs und Transistors |  | 10d | 2019-03-18 | 2019-03-27 |  | 2019-03-18 | 2019-03-27 | 10d |
| 31 | 3.2.2.4 | Enkoders |  | 10d | 2019-03-18 | 2019-03-27 |  | 2019-03-18 | 2019-03-27 | 10d |
| 32 | 3.2.2.5 | Bluetooth Modul |  | 10d | 2019-03-18 | 2019-03-27 |  | 2019-03-18 | 2019-03-27 | 10d |
| 33 | 3.2.2.6 | Akku Wache |  | 10d | 2019-03-18 | 2019-03-27 |  | 2019-03-18 | 2019-03-27 | 10d |
| 34 | 3.2.2.7 | General Purpose LEDs |  | 10d | 2019-03-18 | 2019-03-27 |  | 2019-03-18 | 2019-03-27 | 10d |
| 35 | 3.2.3 | Peripherien fertig | milestone | 0d | 2019-03-28 | 2019-03-28 | 27 | 2019-03-28 | 2019-03-28 | 0d |
| 36 | 3.3 | **Positionierung und Kartierung** |  | 7d | 2019-03-25 | 2019-03-31 |  | 2019-03-25 | 2019-03-31 | 7d |
| 37 | 3.3.1 | Labyrinth Modell entwerfen |  | 4d | 2019-03-25 | 2019-03-28 |  | 2019-03-25 | 2019-03-28 | 4d |
| 38 | 3.3.2 | Labyrinth kartieren |  | 3d | 2019-03-29 | 2019-03-31 | 37, 58 | 2019-03-29 | 2019-03-31 | 3d |
| 39 | 3.4 | **Navigation** |  | 35d | 2019-03-25 | 2019-04-28 |  | 2019-03-25 | 2019-04-28 | 35d |
| 40 | 3.4.1 | **Navigationsebene** |  | 23d | 2019-03-25 | 2019-04-16 |  | 2019-03-25 | 2019-04-16 | 23d |
| 41 | 3.4.1.1 | **Fahrzeugzustand bestimmen** |  | 23d | 2019-03-25 | 2019-04-16 |  | 2019-03-25 | 2019-04-16 | 23d |
| 42 | 3.4.1.1.1 | Kalman Filter entfernen |  | 3d | 2019-03-25 | 2019-03-27 |  | 2019-03-25 | 2019-03-27 | 3d |
| 43 | 3.4.1.1.2 | Kalman Filter testen |  | 4d | 2019-03-28 | 2019-03-31 | 27, 42, 72 | 2019-03-28 | 2019-03-31 | 4d |
| 44 | 3.4.1.1.3 | Verfälschte Sensordaten erkennen und korrigieren |  | 5d | 2019-04-12 | 2019-04-16 | 43 | 2019-04-12 | 2019-04-16 | 5d |
| 45 | 3.4.1.2 | Entdeckungsalgorithm entwickeln |  | 3d | 2019-04-01 | 2019-04-03 | 38 | 2019-04-01 | 2019-04-03 | 3d |
| 46 | 3.4.1.3 | Schnellste Route Algorithm entwickeln |  | 4d | 2019-04-04 | 2019-04-07 | 45 | 2019-04-04 | 2019-04-07 | 4d |
| 47 | 3.4.2 | **Führungsebene** |  | 21d | 2019-04-08 | 2019-04-28 |  | 2019-04-08 | 2019-04-28 | 21d |
| 48 | 3.4.2.1 | Einfaches Drehen Methode |  | 7d | 2019-04-08 | 2019-04-14 | 52 | 2019-04-08 | 2019-04-14 | 7d |
| 49 | 3.4.2.2 | Schnelles Abbiegen Methode |  | 7d | 2019-04-15 | 2019-04-21 | 48 | 2019-04-15 | 2019-04-21 | 7d |
| 50 | 3.4.2.3 | Querfahrt Methode |  | 7d | 2019-04-22 | 2019-04-28 | 49 | 2019-04-22 | 2019-04-28 | 7d |

| ID | WBS | Task | Duration | Start | Finish | Predecessors | Complete | Baseline start | Baseline finish | Baseline duration |
| --- | --- | --- | --- | --- | --- | --- | --- | --- | --- | --- |
| 51 | 3.4.3 | **Stabilisierungsebene** | 7d | 2019-04-01 | 2019-04-07 |  |  | 2019-04-01 | 2019-04-07 | 7d |
| 52 | 3.4.3.1 | PID | 7d | 2019-04-01 | 2019-04-07 | 43, 79 |  | 2019-04-01 | 2019-04-07 | 7d |
| 53 | 4 | **Messungen** | 53d | 2019-02-18 | 2019-04-11 |  | 8% | 2019-02-18 | 2019-04-11 | 53d |
| 54 | 4.1 | **LED Karakteristiken** | 9d | 2019-02-23 | 2019-03-03 |  |  | 2019-02-23 | 2019-03-03 | 9d |
| 55 | 4.1.1 | Zeichnungen anfertigen | 2d | 2019-02-23 | 2019-02-24 |  |  | 2019-02-23 | 2019-02-24 | 2d |
| 56 | 4.1.2 | MATLAB Code | 7d | 2019-02-23 | 2019-03-01 |  |  | 2019-02-23 | 2019-03-01 | 7d |
| 57 | 4.1.3 | Arduino Schaltung und Code | 7d | 2019-02-23 | 2019-03-01 |  |  | 2019-02-23 | 2019-03-01 | 7d |
| 58 | 4.1.4 | Messung durchführen | 2d | 2019-03-02 | 2019-03-03 | 55, 56, 57 |  | 2019-03-02 | 2019-03-03 | 2d |
| 59 | 4.2 | IMU Karakteristiken | 10d | 2019-03-18 | 2019-03-27 |  |  | 2019-03-18 | 2019-03-27 | 10d |
| 60 | 4.3 | Magnetfelde | 3d | 2019-02-18 | 2019-02-20 |  | 76% | 2019-02-18 | 2019-02-20 | 3d |
| 61 | 4.4 | **Fahrzeugkarakteristiken** | 4d | 2019-04-08 | 2019-04-11 | 52 |  | 2019-04-08 | 2019-04-11 | 4d |
| 62 | 4.4.1 | Geradeaus fahren | 4d | 2019-04-08 | 2019-04-11 |  |  | 2019-04-08 | 2019-04-11 | 4d |
| 63 | 4.4.2 | In Stelle drehen | 4d | 2019-04-08 | 2019-04-11 |  |  | 2019-04-08 | 2019-04-11 | 4d |
| 64 | 5 | **MATLAB Debug Interface** | 38d | 2019-03-06 | 2019-04-12 |  |  | 2019-03-06 | 2019-04-12 | 38d |
| 65 | 5.1 | **Sensordaten** | 11d | 2019-03-06 | 2019-03-16 | 56 |  | 2019-03-06 | 2019-03-16 | 11d |
| 66 | 5.1.1 | IMU Einheit | 11d | 2019-03-06 | 2019-03-16 |  |  | 2019-03-06 | 2019-03-16 | 11d |
| 67 | 5.1.2 | Enkoders | 11d | 2019-03-06 | 2019-03-16 |  |  | 2019-03-06 | 2019-03-16 | 11d |
| 68 | 5.1.3 | IR LEDs | 11d | 2019-03-06 | 2019-03-16 |  |  | 2019-03-06 | 2019-03-16 | 11d |
| 69 | 5.1.4 | Akku Wache | 11d | 2019-03-06 | 2019-03-16 |  |  | 2019-03-06 | 2019-03-16 | 11d |
| 70 | 5.2 | **Positionierung und Kartierung** | 7d | 2019-03-25 | 2019-03-31 |  |  | 2019-03-25 | 2019-03-31 | 7d |
| 71 | 5.2.1 | Aktuelle Karte zeichnen | 3d | 2019-03-29 | 2019-03-31 | 37 |  | 2019-03-29 | 2019-03-31 | 3d |
| 72 | 5.2.2 | Fahrzeugzustand zeichnen | 3d | 2019-03-25 | 2019-03-27 |  |  | 2019-03-25 | 2019-03-27 | 3d |
| 73 | 5.3 | **Navigation** | 14d | 2019-03-30 | 2019-04-12 |  |  | 2019-03-30 | 2019-04-12 | 14d |
| 74 | 5.3.1 | **Navigationsebene** | 6d | 2019-04-02 | 2019-04-07 |  |  | 2019-04-02 | 2019-04-07 | 6d |
| 75 | 5.3.1.1 | Route zeichnen | 6d | 2019-04-02 | 2019-04-07 |  |  | 2019-04-02 | 2019-04-07 | 6d |

| ID | WBS | Task | Duration | Start | Finish | Baseline start | Baseline finish | Baseline duration |
| --- | --- | --- | --- | --- | --- | --- | --- | --- |
| 76 | 5.3.2 | **Führungsebene** | 5d | 2019-04-08 | 2019-04-12 | 2019-04-08 | 2019-04-12 | 5d |
| 77 | 5.3.2.1 | Manöver zeichnen | 5d | 2019-04-08 | 2019-04-12 | 2019-04-08 | 2019-04-12 | 5d |
| 78 | 5.3.3 | **Stabilisierungsebene** | 2d | 2019-03-30 | 2019-03-31 | 2019-03-30 | 2019-03-31 | 2d |
| 79 | 5.3.3.1 | Soll-, Ist- und Regelgrößen plotten | 2d | 2019-03-30 | 2019-03-31 | 2019-03-30 | 2019-03-31 | 2d |
